# DSS with milestones

Schedule from MS Project, 2011-05-10 to 2011-07-01, A marks actual dates.
Microsoft Corporation

## Calendars

- Standard: Mon-Fri 08:00-12:00, 13:00-17:00; Sat-Sun off.

## Resources

| Resource |
| --- |
| Fernando |
| Mario Solis |
| Randall |
| Andres Camacho |
| Maroi |
| Michael Sanchez |
| ALLan |
| Marine |

## Schedule

| ID | WBS | Task | Duration | Start | Finish | Predecessors | Complete | Remaining | Total slack | Free slack | Constraint | Resources | Work | Actual work |
| --- | --- | --- | --- | --- | --- | --- | --- | --- | --- | --- | --- | --- | --- | --- |
| 1 | 1 | **DSS Project** | 39d | 2011-05-10 A | 2011-07-01 |  | 39% | 23.72d | 0d |  |  |  | 1040h | 368.4h |
| 2 | 1.1 | **Milestone 1** | 14d | 2011-05-10 A | 2011-05-27 |  | 60% | 5.56d | 3.68d | 0d |  |  | 424h | 268h |
| 3 | 1.1.1 | Ramp Up | 4d | 2011-05-10 A | 2011-05-13 A |  | 100% |  |  |  |  | Fernando; Mario Solis | 64h | 64h |
| 4 | 1.1.2 | Test of the RIA Services | 4d | 2011-05-10 A | 2011-05-13 A |  | 100% |  |  |  |  | Andres Camacho | 32h | 32h |
| 5 | 1.1.3 | **Ribbon** | 7d | 2011-05-16 A | 2011-05-24 | 3 | 79% | 1.5d | 6.68d |  |  |  | 56h | 44h |
| 6 | 1.1.3.1 | Create Ribbon | 1d | 2011-05-16 A | 2011-05-16 A |  | 100% |  |  |  |  | Randall | 8h | 8h |
| 7 | 1.1.3.2 | Sync Group | 6d | 2011-05-17 A | 2011-05-24 | 6 | 75% | 1.5d | 6.68d |  |  | Randall | 48h | 36h |
| 8 | 1.1.4 | **Content** | 10d | 2011-05-16 A | 2011-05-27 |  | 42% | 5.83d | 3.68d |  |  |  | 272h | 128h |
| 9 | 1.1.4.1 | Topology diagram control | 10d | 2011-05-16 A | 2011-05-27 | 3 | 60% | 4d | 3.68d |  |  | Mario Solis; Fernando | 160h | 96h |
| 10 | 1.1.4.2 | Getting started | 1d | 2011-05-16 A | 2011-05-16 A | 4 | 100% |  |  |  |  | Andres Camacho | 8h | 8h |
| 11 | 1.1.4.3 | Sync Group Creation Page | 3d | 2011-05-17 A | 2011-05-19 A | 10 | 100% |  |  |  |  | Andres Camacho | 24h | 24h |
| 12 | 1.1.4.4 | **Add Database to Sync Group Wizard** | 5d | 2011-05-23 | 2011-05-27 | 3 |  |  | 3.68d |  |  |  | 64h |  |
| 13 | 1.1.4.4.1 | Add SQL Azure Database | 2d | 2011-05-23 | 2011-05-24 |  |  |  | 4.68d | 0d | start no earlier than 2011-05-23 | ALLan | 16h |  |
| 14 | 1.1.4.4.2 | Add SQL Server Database | 2d | 2011-05-25 | 2011-05-26 | 13 |  |  | 4.68d |  |  | ALLan | 16h |  |
| 15 | 1.1.4.4.3 | Step 1 dialog | 2d | 2011-05-24 | 2011-05-25 | 18 |  |  | 3.68d | 0d | start no earlier than 2011-05-23 | Andres Camacho | 16h |  |
| 16 | 1.1.4.4.4 | Step 2 dialog | 2d | 2011-05-26 | 2011-05-27 | 15 |  |  | 3.68d |  |  | Andres Camacho | 16h |  |
| 17 | 1.1.4.5 | **Data Sync Tree View** | 2d | 2011-05-20 | 2011-05-23 |  |  |  | 3.68d |  |  |  | 16h |  |
| 18 | 1.1.4.5.1 | Sync Groups | 2d | 2011-05-20 | 2011-05-23 | 11 |  |  | 3.68d | 0d |  | Andres Camacho | 16h |  |
| 19 | 1.2 | **Milestone 2** | 15d | 2011-05-30 A | 2011-06-17 | 2 | 29% | 10.62d | 0d |  |  |  | 376h | 100.4h |
| 20 | 1.2.1 | **Ribbon** | 5d | 2011-05-30 A | 2011-06-03 |  | 60% | 2d | 10d |  |  |  | 40h | 24h |
| 21 | 1.2.1.1 | Agent | 2d | 2011-05-30 A | 2011-05-31 A |  | 100% |  |  |  |  | Randall | 16h | 16h |
| 22 | 1.2.1.2 | Log | 1d | 2011-06-01 A | 2011-06-01 A | 21 | 100% |  |  |  |  | Randall | 8h | 8h |
| 23 | 1.2.1.3 | View | 1d | 2011-06-02 | 2011-06-02 | 22 |  |  | 10d | 0d |  | Randall | 8h |  |
| 24 | 1.2.1.4 | Service | 1d | 2011-06-03 | 2011-06-03 | 23 |  |  | 10d |  |  | Randall | 8h |  |

| ID | WBS | Task | Type | Duration | Start | Finish | Predecessors | Complete | Remaining | Total slack | Free slack | Resources | Work | Actual work |
| --- | --- | --- | --- | --- | --- | --- | --- | --- | --- | --- | --- | --- | --- | --- |
| 25 | 1.2.2 | **Content** |  | 11d | 2011-05-30 A | 2011-06-13 |  | 22% | 8.56d | 4d |  |  | 200h | 44.4h |
| 26 | 1.2.2.1 | Define Data Set for Sync Dialog |  | 3d | 2011-05-30 | 2011-06-01 |  |  |  | 4.5d | 0d | Mario Solis | 24h |  |
| 27 | 1.2.2.2 | Schema Check Report Dialog |  | 2d | 2011-05-30 A | 2011-05-31 |  | 90% | 0.2d | 5.5d | 0d | Fernando | 16h | 14.4h |
| 28 | 1.2.2.3 | Sync Group Diagram page |  | 2d | 2011-06-01 A | 2011-06-02 | 27 | 75% | 0.5d | 4d | 0d | Fernando | 16h | 12h |
| 29 | 1.2.2.4 | Sync Group Table View page |  | 2d | 2011-06-02 A | 2011-06-03 | 26 | 75% | 0.5d | 3d | 0d | Mario Solis | 16h | 12h |
| 30 | 1.2.2.5 | Sync Groups Status Page |  | 4d | 2011-06-03 | 2011-06-08 | 28 |  |  | 4d | 0d | Fernando | 32h |  |
| 31 | 1.2.2.6 | Azure Database Status Page | inactive | 2d | 2011-05-30 | 2011-05-31 |  |  |  | 13d |  | Andres Camacho | 16h |  |
| 32 | 1.2.2.7 | SQL Database Status Page | inactive | 1d | 2011-06-06 | 2011-06-06 | 29 |  |  | 9d |  | Mario Solis | 8h |  |
| 33 | 1.2.2.8 | Azure Database Information Page |  | 3d | 2011-05-30 A | 2011-06-01 |  | 25% | 2.25d | 2d | 0d | Andres Camacho | 24h | 6h |
| 34 | 1.2.2.9 | On Premise Database Information Page |  | 1d | 2011-06-02 | 2011-06-02 | 33 |  |  | 2d | 0d | Andres Camacho | 8h |  |
| 35 | 1.2.2.10 | Agent Page |  | 3d | 2011-06-09 | 2011-06-13 | 30 |  |  | 4d |  | Fernando | 24h |  |
| 36 | 1.2.2.11 | Log Viewer Page |  | 5d | 2011-06-06 | 2011-06-10 | 29 |  |  | 3d | 0d | Mario Solis | 40h |  |
| 37 | 1.2.2.12 | **** Database and Sync Groups Page | inactive | 4d | 2011-06-03 | 2011-06-08 | 34 |  |  | 7d |  | Andres Camacho | 32h |  |
| 38 | 1.2.3 | **Data Sync Tree View** |  | 4d | 2011-06-10 A | 2011-06-15 A | 41 | 100% |  |  |  |  | 32h | 32h |
| 39 | 1.2.3.1 | Sync Groups |  | 2d | 2011-06-10 A | 2011-06-13 A |  | 100% |  |  |  | Andres Camacho | 16h | 16h |
| 40 | 1.2.3.2 | Member Databases |  | 2d | 2011-06-14 A | 2011-06-15 A | 39 | 100% |  |  |  | Andres Camacho | 16h | 16h |
| 41 | 1.2.4 | Graphic Integration |  | 5d | 2011-06-03 | 2011-06-09 | 34 |  |  | 2d | 0d | Andres Camacho | 40h |  |
| 42 | 1.2.5 | DSS Service Center Dialog |  | 2d | 2011-06-13 | 2011-06-14 | 36 |  |  | 3d |  | Mario Solis | 16h |  |
| 43 | 1.2.6 | Bug fixing round |  | 2d | 2011-06-16 | 2011-06-17 | 40 |  |  | 0d |  | Andres Camacho; Fernando; Mario Solis | 48h |  |
| 44 | 1.3 | **Milestone 3** |  | 10d | 2011-06-20 | 2011-07-01 | 19 |  |  | 0d |  |  | 240h |  |
| 45 | 1.3.1 | Bug fixing and Integration |  | 5d | 2011-06-20 | 2011-06-24 |  |  |  | 0d |  | Andres Camacho; Fernando; Mario Solis | 120h |  |
| 46 | 1.3.2 | UAT |  | 5d | 2011-06-27 | 2011-07-01 | 45 |  |  | 0d |  | Fernando; Andres Camacho; Mario Solis | 120h |  |

Notes:
- 37: Move to the end!!
